# ProjectPlanning

Schedule from MS Project, 2016-09-02 to 2017-01-03, costs in $.
MonteVista Solutions, Inc.

## Calendars

- Standard: Mon-Fri 08:00-12:00, 13:00-17:00; Sat-Sun off.

## Resources

| Resource | Rate |
| --- | --- |
| Quality Analyst | 30 |
| Development and Operation | 35 |
| Requirements Analyst | 40 |
| Project Manager | 45 |
| Test Engineer | 30 |
| Developer1 | 40 |
| Developer2 | 40 |
| System Analyst | 40 |

## Schedule

| ID | WBS | Task | Type | Duration | Start | Finish | Predecessors | Total slack | Free slack | Constraint | Resources | Work | Cost |
| --- | --- | --- | --- | --- | --- | --- | --- | --- | --- | --- | --- | --- | --- |
| 1 | 1 | Project kickoff |  | 1d | 2016-09-02 | 2016-09-02 |  | 87d |  | start no earlier than 2016-09-02 | Project Manager; Quality Analyst; Development and Operation; Requirements Analyst; System Analyst | 40h | 1,520 |
| 2 | 2 | **Vision definition** |  | 8d | 2016-09-05 | 2016-09-14 |  | 52.5d | 0d |  |  | 64h | 2,880 |
| 3 | 2.1 | Define vision |  | 5d | 2016-09-05 | 2016-09-09 |  | 52.5d | 0d | finish no earlier than 2016-09-09 | Project Manager | 40h | 1,800 |
| 4 | 2.2 | Review vision |  | 2d | 2016-09-12 | 2016-09-13 | 3 | 52.5d | 0d | finish no earlier than 2016-09-13 | Project Manager | 16h | 720 |
| 5 | 2.3 | Approve and publish vision |  | 1d | 2016-09-14 | 2016-09-14 | 4 | 52.5d | 0d | start no earlier than 2016-09-13 | Project Manager | 8h | 360 |
| 6 | 2.4 | Vision definition complete | milestone | 0d | 2016-09-14 | 2016-09-14 | 5 | 55.5d | 22d |  | Project Manager |  |  |
| 7 | 3 | **Feasibility definition** |  | 8d | 2016-09-05 | 2016-09-15 |  | 0d |  |  |  | 64h | 2,560 |
| 8 | 3.1 | Executive Summary |  | 2d | 2016-09-05 | 2016-09-06 |  | 0d |  | start no earlier than 2016-09-05 | Requirements Analyst | 16h | 640 |
| 9 | 3.2 | Review Executive Summary |  | 1d | 2016-09-07 | 2016-09-07 | 8 | 0d |  | start no earlier than 2016-09-07 | System Analyst | 8h | 320 |
| 10 | 3.3 | Define Feasibility |  | 3d | 2016-09-08 | 2016-09-12 | 9 | 0d |  | start no earlier than 2016-09-08 | Requirements Analyst | 24h | 960 |
| 11 | 3.4 | Review Feasibility |  | 2d | 2016-09-13 | 2016-09-14 | 10 | 0d |  |  | System Analyst | 16h | 640 |
| 12 | 3.5 | Approve and publish feasibility | milestone | 0d | 2016-09-15 | 2016-09-15 | 11 | 0d |  | start no earlier than 2016-09-15 | Project Manager |  |  |
| 13 | 3.6 | Feasibility definition complete | milestone | 0d | 2016-09-15 | 2016-09-15 | 12 | 0d |  |  | Project Manager |  |  |
| 14 | 4 | **Set up project** |  | 13d | 2016-09-15 | 2016-10-03 | 2, 7 | 52.5d |  |  |  | 96h | 3,920 |
| 15 | 4.1 | Define project plan |  | 5d | 2016-09-15 | 2016-09-21 |  | 52.5d | 0d | finish no earlier than 2016-09-21 | Project Manager | 40h | 1,800 |
| 16 | 4.2 | Review project plan |  | 2d | 2016-09-22 | 2016-09-26 | 15 | 52.5d | 0d |  | Project Manager | 16h | 720 |
| 17 | 4.3 | Approve and publish project plan | milestone | 0d | 2016-09-26 | 2016-09-26 | 16 | 71d | 0d |  | Project Manager |  |  |
| 18 | 4.4 | Project plan complete | milestone | 0d | 2016-09-26 | 2016-09-26 | 17 | 71d |  |  | Project Manager |  |  |
| 19 | 4.5 | Set up working environment |  | 5d | 2016-09-27 | 2016-10-03 | 16 | 52.5d | 0d | finish no earlier than 2016-09-16 | Development and Operation | 40h | 1,400 |
| 20 | 4.6 | Project setup complete | milestone | 0d | 2016-10-03 | 2016-10-03 | 19 | 52.5d | 9d | start no earlier than 2016-09-16 | Project Manager; Development and Operation |  |  |
| 21 | 5 | **Requirement Analysis** |  | 18d | 2016-09-15 | 2016-10-10 | 7 | 0d |  |  |  | 132h | 5,280 |
| 22 | 5.1 | Use Case Diagrams |  | 1d | 2016-09-15 | 2016-09-15 |  | 73.5d | 0d | start no earlier than 2016-09-12 | Requirements Analyst | 8h | 320 |
| 23 | 5.2 | Use Case Prioritization |  | 0.5d | 2016-09-16 | 2016-09-16 | 22 | 73.5d | 0d |  | Requirements Analyst | 4h | 160 |
| 24 | 5.3 | UC1 Fully Dressed |  | 2d | 2016-09-16 | 2016-09-20 | 23 | 74.5d | 0d |  | System Analyst | 16h | 640 |
| 25 | 5.4 | UC1 SSD |  | 1d | 2016-09-20 | 2016-09-21 | 24 | 74.5d |  |  | System Analyst | 8h | 320 |
| 26 | 5.5 | Operation Contracts |  | 1d | 2016-10-10 | 2016-10-10 | 23 | 61d |  | start no earlier than 2016-10-10 | System Analyst | 8h | 320 |
| 27 | 5.6 | Supplementary Specification |  | 3d | 2016-09-15 | 2016-09-19 |  | 76d |  | start no earlier than 2016-09-13 | Requirements Analyst | 24h | 960 |
| 28 | 5.7 | UC2 Review | manual | 1d? | 2016-09-15 | 2016-09-15 |  |  |  |  |  |  |  |
| 29 | 5.8 | UC2 Fully Dressed |  | 4d | 2016-09-16 | 2016-09-22 | 23 | 73.5d |  |  | System Analyst | 32h | 1,280 |
| 30 | 5.9 | UC2 SSD |  | 4d | 2016-09-15 | 2016-09-20 |  | 75d |  |  | System Analyst | 32h | 1,280 |

| ID | WBS | Task | Type | Duration | Start | Finish | Predecessors | Total slack | Free slack | Constraint | Resources | Work | Cost |
| --- | --- | --- | --- | --- | --- | --- | --- | --- | --- | --- | --- | --- | --- |
| 31 | 6 | **Product Design** |  | 24d | 2016-10-14 | 2016-11-16 |  |  |  |  |  | 96h | 3,240 |
| 32 | 6.1 | High level architecture- logical view |  | 1d | 2016-10-11 | 2016-10-11 |  | 60d |  | finish no earlier than 2016-10-11 | Quality Analyst; Development and Operation; Developer1 | 24h | 840 |
| 33 | 6.2 | Composite Diagrams | manual | 1d | 2016-10-12 | 2016-10-12 |  |  |  |  | Quality Analyst; Development and Operation; Developer1 | 24h | 840 |
| 34 | 6.3 | UI Design | manual | 1d | 2016-10-13 | 2016-10-13 |  |  |  |  | Quality Analyst | 8h | 240 |
| 35 | 6.4 | DB Design | manual | 1d | 2016-10-13 | 2016-10-13 |  |  |  |  | Development and Operation | 8h | 280 |
| 36 | 6.5 | System detailed design document | manual | 1d | 2016-10-14 | 2016-10-14 |  |  |  | start no earlier than 2016-10-14 | Quality Analyst; Development and Operation | 16h | 520 |
| 37 | 6.6 | Review UI Design | manual | 1d | 2016-11-09 | 2016-11-09 |  |  |  |  | Quality Analyst | 8h | 240 |
| 38 | 6.7 | Review DB Design | manual | 1d | 2016-11-09 | 2016-11-09 |  |  |  |  | Development and Operation | 8h | 280 |
| 39 | 7 | **Release 1** |  | 57d | 2016-10-17 | 2017-01-03 |  | 0d |  |  |  | 318.8h | 11,748 |
| 40 | 7.1 | **Release 1 plan** |  | 3d | 2016-10-17 | 2016-10-19 |  | 43.5d |  |  |  | 140h | 5,160 |
| 41 | 7.1.1 | Develop release strategy and vision |  | 0.5d | 2016-10-17 | 2016-10-17 | 20, 6 | 43.5d | 0d | start no earlier than 2016-10-17 | Quality Analyst; Development and Operation; Project Manager; Requirements Analyst; Developer1 | 20h | 760 |
| 42 | 7.1.2 | Identify focus for release |  | 0.5d | 2016-10-17 | 2016-10-17 | 41 | 43.5d | 0d |  | Quality Analyst; Development and Operation; Test Engineer; Project Manager; Requirements Analyst; Developer1 | 24h | 880 |
| 43 | 7.1.3 | Develop sprint strategies |  | 1.5d | 2016-10-18 | 2016-10-19 | 42 | 43.5d | 0d |  | Quality Analyst; Development and Operation; Test Engineer; Project Manager; Developer1; Requirements Analyst | 72h | 2,640 |
| 44 | 7.1.4 | Release plan 1 complete |  | 0.5d | 2016-10-19 | 2016-10-19 | 43 | 43.5d | 0d |  | Quality Analyst; Development and Operation; Test Engineer; Project Manager; Developer1; Requirements Analyst | 24h | 880 |
| 45 | 7.2 | **Sprint 1** |  | 54d | 2016-10-20 | 2017-01-03 |  | 0d |  |  |  | 86.4h | 3,144 |
| 46 | 7.2.1 | **Sprint 1 plan** |  | 1d | 2016-10-20 | 2016-10-20 |  | 43.5d |  |  |  | 16h | 520 |
| 47 | 7.2.1.1 | Assign UC1 Story |  | 0.25d | 2016-10-20 | 2016-10-20 | 44 | 43.5d | 0d |  | Quality Analyst; Development and Operation | 4h | 130 |
| 48 | 7.2.1.2 | Sprint 1 plan complete |  | 0.75d | 2016-10-20 | 2016-10-20 | 47 | 43.5d | 0d |  | Quality Analyst; Development and Operation | 12h | 390 |
| 49 | 7.2.2 | **Sprint 1 execution** |  | 9d | 2016-10-21 | 2016-11-02 | 48 | 43.5d |  |  |  | 50.4h | 1,944 |
| 50 | 7.2.2.1 | Daily scrum |  | 9d | 2016-10-21 | 2016-11-02 |  | 43.5d | 0d |  | Quality Analyst [15%]; Development and Operation [15%]; Requirements Analyst [15%]; Project Manager [15%] | 43.2h | 1,620 |
| 51 | 7.2.2.2 | Review and maintain sprint plan |  | 9d | 2016-10-21 | 2016-11-02 |  | 43.5d | 0d |  | Project Manager [10%] | 7.2h | 324 |
| 52 | 7.2.3 | Sprint execution complete | milestone | 0d | 2016-11-02 | 2016-11-02 | 50, 51 | 43.5d | 0d |  | Requirements Analyst |  |  |
| 53 | 7.2.4 | Sprint 1 review |  | 0.25d | 2016-11-03 | 2016-11-03 | 52 | 43.5d | 0d |  | Requirements Analyst | 2h | 80 |
| 54 | 7.2.5 | Sprint 1 retrospective |  | 0.25d | 2016-11-03 | 2016-11-03 | 53 | 43.5d | 0d |  | Project Manager; Quality Analyst; Development and Operation; Test Engineer; Requirements Analyst | 10h | 360 |
| 55 | 7.2.6 | Sprint 1 complete | milestone | 0d | 2016-11-03 | 2016-11-03 | 54 | 43.5d |  | finish no earlier than 2016-11-02 | Quality Analyst; Development and Operation; Test Engineer; Project Manager; Requirements Analyst |  |  |
| 56 | 7.2.7 | Release 1.1 build |  | 1d | 2017-01-03 | 2017-01-03 |  | 0d |  | start no earlier than 2017-01-03 | Test Engineer | 8h | 240 |

Notes:
- 56: Link to completion milestone for last sprint in release

| ID | WBS | Task | Type | Duration | Start | Finish | Predecessors | Total slack | Free slack | Constraint | Resources | Work | Cost |
| --- | --- | --- | --- | --- | --- | --- | --- | --- | --- | --- | --- | --- | --- |
| 57 | 7.3 | **Sprint 2** |  | 11d | 2016-11-10 | 2016-11-24 |  | 28d |  |  |  | 84.4h | 3,084 |
| 58 | 7.3.1 | **Sprint 2 plan** |  | 1d | 2016-11-10 | 2016-11-10 |  | 28.5d |  |  |  | 16h | 520 |
| 59 | 7.3.1.1 | Assign UC2 Story |  | 0.25d | 2016-11-10 | 2016-11-10 |  | 28.5d | 0d | start no earlier than 2016-11-10 | Quality Analyst; Development and Operation | 4h | 130 |
| 60 | 7.3.1.2 | Sprint 1 plan complete |  | 0.75d | 2016-11-10 | 2016-11-10 | 59 | 28.5d | 0d |  | Quality Analyst; Development and Operation | 12h | 390 |
| 61 | 7.3.2 | **Sprint 2 execution** |  | 9d | 2016-11-11 | 2016-11-23 | 60 | 28.5d |  |  |  | 50.4h | 1,944 |
| 62 | 7.3.2.1 | Daily scrum |  | 9d | 2016-11-11 | 2016-11-23 |  | 28.5d | 0d |  | Quality Analyst [15%]; Development and Operation [15%]; Requirements Analyst [15%]; Project Manager [15%] | 43.2h | 1,620 |
| 63 | 7.3.2.2 | Review and maintain sprint plan |  | 9d | 2016-11-11 | 2016-11-23 |  | 28.5d | 0d |  | Project Manager [10%] | 7.2h | 324 |
| 64 | 7.3.3 | Sprint execution complete | milestone | 0d | 2016-11-23 | 2016-11-23 | 62, 63 | 28.5d | 0d |  | Requirements Analyst |  |  |
| 65 | 7.3.4 | Sprint 2 review |  | 0.25d | 2016-11-24 | 2016-11-24 | 64 | 28.5d | 0d |  | Requirements Analyst | 2h | 80 |
| 66 | 7.3.5 | Sprint 2 retrospective |  | 0.25d | 2016-11-24 | 2016-11-24 | 65 | 28.5d | 0d |  | Project Manager; Quality Analyst; Development and Operation; Requirements Analyst | 8h | 300 |
| 67 | 7.3.6 | Sprint 2 complete | milestone | 0d | 2016-11-24 | 2016-11-24 | 66 | 28.5d |  |  | Quality Analyst; Development and Operation; Test Engineer; Project Manager; Requirements Analyst |  |  |
| 68 | 7.3.7 | Release 1.2 build |  | 1d | 2016-11-24 | 2016-11-24 |  | 28d |  | start no earlier than 2016-11-24 | Test Engineer | 8h | 240 |
| 69 | 7.4 | Product presentation and demo | manual | 1d | 2016-10-17 | 2016-10-17 |  |  |  |  | Project Manager | 8h | 360 |

Notes:
- 68: Link to completion milestone for last sprint in release
